# TopCoder Software Project Plan

Schedule from MS Project, 2004-01-27 to 2006-08-04, A marks actual dates.
TopCoder Software Project Plan
TopCoder

## Calendars

- Standard: Mon-Fri 08:00-12:00, 13:00-17:00; Sat-Sun off.

## Resources

| Resource |
| --- |
| Project Manager |
| Component Architect |
| Information Architect |
| Component Manager |
| Application Architect |
| Application Assembler 1 |
| Deployment Engineer 1 |
| Customer |
| Member |
| Review |
| Application Assembler 4 |
| Application Assembler 3 |
| Application Assembler 2 |
| Deployment Engineer 3 |
| Deployment Engineer 2 |
| Deployment Engineer |
| Deployment Engineer/Project Manager |

## Schedule

| ID | WBS | Task | Type | Duration | Start | Finish | Predecessors | Complete | Remaining | Baseline start | Baseline finish | Baseline duration | Total slack | Free slack | Constraint | Resources | Work | Actual work |
| --- | --- | --- | --- | --- | --- | --- | --- | --- | --- | --- | --- | --- | --- | --- | --- | --- | --- | --- |
| 1 | 1 | **TopCoder Online Review/Scorecard Project** |  | 658.5d? | 2004-01-27 A | 2006-08-04 |  | 1% | 649.69d? |  |  |  | 0d |  |  |  | 1192h | 24h |
| 2 | 1.1 | Kick Off Meeting |  | 0.5d? | 2006-03-02 | 2006-03-02 |  |  |  |  |  |  | 111d |  | start no earlier than 2006-03-02 | Project Manager; Customer | 8h |  |
| 3 | 1.2 | Creation of TopCoder Application Forum |  | 1d | 2006-03-02 A | 2006-03-03 A | 2 | 100% |  |  |  |  |  |  | start no earlier than 2005-06-29 | Project Manager | 8h | 8h |
| 4 | 1.3 | Assign Client Permissions to Forums |  | 1d | 2006-03-02 A | 2006-03-02 A |  | 100% |  |  |  |  |  |  | start no earlier than 2005-06-29 | Project Manager; Customer | 16h | 16h |
| 5 | 1.4 | Create SVN module for Application |  | 1d | 2005-06-29 | 2005-06-29 |  |  |  |  |  |  | 286.5d |  | start no earlier than 2005-06-29 | Project Manager; Component Manager | 16h |  |
| 6 | 1.5 | Key Stakeholder Meetings |  | 3d | 2006-03-06 | 2006-03-08 |  |  |  |  |  |  | 0d |  | start no earlier than 2006-03-06 | Project Manager; Customer | 48h |  |
| 7 | 1.6 | **Application Specification** |  | 11.5d? | 2006-03-09 | 2006-03-24 | 6 |  |  | 2004-01-20 | 2004-02-11 | 17d? | 0d |  |  |  | 88h |  |
| 8 | 1.6.1 | **Requirement Specification Draft** |  | 1d | 2006-03-09 | 2006-03-09 | 6 |  |  | 2004-01-20 | 2004-01-22 | 3d? | 99d | 0d |  | Project Manager | 8h |  |
| 9 | 1.6.1.1 | Fill in Scope |  | 1d | 2006-03-09 | 2006-03-09 |  |  |  |  |  |  | 99d |  |  |  |  |  |
| 10 | 1.6.2 | Review Meeting |  | 0.5d | 2006-03-10 | 2006-03-10 | 8 |  |  | 2004-01-23 | 2004-01-23 | 1d? | 99d | 0d |  | Project Manager; Customer | 8h |  |
| 11 | 1.6.3 | Create/Update Use Cases |  | 2d | 2006-03-09 | 2006-03-10 |  |  |  |  |  |  | 104.5d |  | start no earlier than 2006-03-02 |  |  |  |
| 12 | 1.6.4 | **Module Specification** |  | 3d? | 2006-03-09 | 2006-03-13 |  |  |  | 2004-01-23 | 2004-02-11 | 14d? | 95d |  |  |  | 16h |  |
| 13 | 1.6.4.1 | Create/Update Activity Diagram |  | 2d | 2006-03-09 | 2006-03-10 |  |  |  |  |  |  | 95d | 0d | finish no earlier than 2005-01-14 | Project Manager | 16h |  |
| 14 | 1.6.4.2 | Fill in Logic Requirements for use cases and activity diagrams |  | 1d? | 2006-03-13 | 2006-03-13 | 13 |  |  |  |  |  | 95d | 0d |  |  |  |  |
| 15 | 1.6.4.3 | Review Meeting |  | 1d? | 2006-03-09 | 2006-03-09 |  |  |  |  |  |  | 105.5d |  |  |  |  |  |
| 16 | 1.6.5 | Create Site Map |  | 1d? | 2006-03-14 | 2006-03-14 | 14 |  |  |  |  |  | 95d | 0d |  |  |  |  |
| 17 | 1.6.6 | Review Meeting |  | 0.5d | 2006-03-15 | 2006-03-15 | 16 |  |  |  |  |  | 95d | 0d |  |  |  |  |
| 18 | 1.6.7 | Create Site Definition |  | 2d | 2006-03-15 | 2006-03-17 | 17 |  |  |  |  |  | 95d | 0d |  |  |  |  |
| 19 | 1.6.8 | Prototype Revision 1 |  | 5d | 2006-03-17 | 2006-03-24 | 18 |  |  |  |  |  | 95d |  |  |  |  |  |
| 20 | 1.6.9 | Architecture Diagram Draft |  | 2d | 2006-03-10 | 2006-03-14 | 10 |  |  | 2004-01-27 | 2004-01-28 | 2d? | 99d | 0d | start no earlier than 2005-01-19 | Project Manager | 16h |  |
| 21 | 1.6.10 | Fill in Technical Requirements |  | 1d? | 2006-03-14 | 2006-03-15 | 20 |  |  |  |  |  | 99d | 0d |  |  |  |  |
| 22 | 1.6.11 | Review Meeting |  | 0.5d | 2006-03-15 | 2006-03-15 | 13, 21 |  |  | 2004-01-30 | 2004-01-30 | 1d? | 99d | 0d |  | Project Manager; Customer | 8h |  |
| 23 | 1.6.12 | Prototype Revision 2 Review |  | 0.5d | 2006-03-16 | 2006-03-16 | 22 |  |  |  |  |  | 99d | 0d |  |  |  |  |
| 24 | 1.6.13 | Complete QA Plan |  | 2d | 2006-03-16 | 2006-03-20 | 23 |  |  |  |  |  | 99d |  |  |  |  |  |
| 25 | 1.6.14 | Review Meeting |  | 0.5d | 2006-03-09 | 2006-03-09 |  |  |  | 2004-02-06 | 2004-02-06 | 1d? | 0d |  |  | Project Manager; Customer | 8h |  |
| 26 | 1.6.15 | Update Final Specification Deliverables |  | 2d | 2006-03-09 | 2006-03-13 | 25 |  |  | 2004-02-09 | 2004-02-10 | 2d? | 0d |  |  | Project Manager | 16h |  |
| 27 | 1.6.16 | Final Specification Presentation | milestone | 1d? | 2006-03-13 | 2006-03-14 | 26 |  |  | 2004-02-11 | 2004-02-11 | 1d? | 0d |  |  | Project Manager | 8h |  |

Notes:
- 12: This will be iterated over multiple times for each module.

| ID | WBS | Task | Type | Duration | Start | Finish | Predecessors | Total slack | Free slack | Constraint | Resources | Work |
| --- | --- | --- | --- | --- | --- | --- | --- | --- | --- | --- | --- | --- |
| 28 | 1.7 | **Application Architecture** |  | 19d | 2006-03-14 | 2006-04-10 |  | 0d |  |  |  | 200h |
| 29 | 1.7.1 | **UML Diagrams** |  | 14d | 2006-03-14 | 2006-04-03 | 27 | 0d |  |  |  | 88h |
| 30 | 1.7.1.1 | Update Site Map and Site Definition |  | 3d | 2006-03-14 | 2006-03-17 | 27 | 0d |  |  |  |  |
| 31 | 1.6.2 | Component Sequence Diagrams |  | 5d | 2006-03-17 | 2006-03-24 | 30 | 0d |  | finish no earlier than 2005-02-04 | Component Architect | 40h |
| 32 | 1.6.1 | Component Interface Diagram |  | 5d | 2006-03-24 | 2006-03-31 | 31 | 0d |  | finish no earlier than 2005-02-04 | Component Architect | 40h |
| 33 | 1.7.1.4 | Component Diagram |  | 1d | 2006-03-31 | 2006-04-03 | 32 | 0d |  |  | Component Architect | 8h |
| 34 | 1.6.3 | Physical Data Model Definition |  | 3d | 2006-04-03 | 2006-04-06 | 29 | 0.5d | 0d | finish no earlier than 2005-02-04 | Component Architect | 24h |
| 35 | 1.7.3 | PM Review |  | 1d | 2006-04-06 | 2006-04-07 | 29, 34 | 0.5d | 0d |  | Project Manager; Component Architect | 16h |
| 36 | 1.6.4 | Application Architecture Presentation |  | 0.5d | 2006-04-07 | 2006-04-07 | 35 | 0.5d |  |  | Project Manager; Component Architect | 8h |
| 37 | 1.6.5 | Component Specifications | milestone | 5d | 2006-04-03 | 2006-04-10 | 29 | 0d |  | finish no earlier than 2005-02-11 | Component Architect | 40h |
| 38 | 1.7.6 | Application Design Specification |  | 3d | 2006-04-03 | 2006-04-06 | 29 | 2d |  |  | Component Architect | 24h |
| 39 | 1.8 | **Component Production** |  | 30d | 2006-04-10 | 2006-05-22 |  | 0d |  |  |  | 240h |
| 40 | 1.8.1 | Design Posting |  | 6d | 2006-04-10 | 2006-04-18 | 28 | 0d |  | start no earlier than 2005-03-09 | Member | 48h |
| 41 | 1.8.2 | Design Review |  | 6d | 2006-04-18 | 2006-04-26 | 40 | 0d |  | finish no earlier than 2005-03-21 | Member | 48h |
| 42 | 1.8.3 | Design Final Fixes |  | 2d | 2006-04-26 | 2006-04-28 | 41 | 0d |  |  | Member | 16h |
| 43 | 1.8.4 | Creation of Dev Distro |  | 1d | 2006-04-28 | 2006-05-01 | 42 | 0d |  |  | Component Manager | 8h |
| 44 | 1.8.5 | Development Posting |  | 6d | 2006-05-01 | 2006-05-09 | 43 | 0d |  | start no earlier than 2005-03-30 | Member | 48h |
| 45 | 1.8.6 | Development Review |  | 6d | 2006-05-09 | 2006-05-17 | 44 | 0d |  |  | Member | 48h |
| 46 | 1.8.7 | Development Final Fixes | milestone | 2d | 2006-05-17 | 2006-05-19 | 45 | 0d |  | finish no earlier than 2005-04-06 | Member | 16h |
| 47 | 1.8.8 | Post to Catalog |  | 1d | 2006-05-19 | 2006-05-22 | 46 | 0d |  |  | Component Manager | 8h |
| 48 | 1.9 | **Application Assembly** |  | 23d? | 2006-05-22 | 2006-06-22 |  | 0d |  |  |  | 184h |
| 49 | 1.9.1 | Test Case Development |  | 7d? | 2006-05-22 | 2006-05-31 | 47 | 0d |  | finish no earlier than 2005-04-15 | Application Assembler 1 | 56h |
| 50 | 1.9.2 | Test Case Review |  | 1d? | 2006-05-31 | 2006-06-01 | 49 | 0d |  |  | Application Architect | 8h |
| 51 | 1.9.3 | Application Source Code Development |  | 15d? | 2006-06-01 | 2006-06-22 | 50 | 0d |  | finish no earlier than 2005-05-06 | Application Assembler 1 | 120h |

| ID | WBS | Task | Type | Duration | Start | Finish | Predecessors | Total slack | Free slack | Constraint | Resources | Work |
| --- | --- | --- | --- | --- | --- | --- | --- | --- | --- | --- | --- | --- |
| 52 | 1.10 | **Certification** |  | 16d? | 2006-06-22 | 2006-07-14 |  | 0d |  |  |  | 128h |
| 53 | 1.10.1 | Deployment to TopCoder QA |  | 3d? | 2006-06-22 | 2006-06-27 | 51 | 0d |  | finish no earlier than 2005-05-11 | Application Assembler 1 | 24h |
| 54 | 1.10.2 | **Testing Iteration** |  | 12d? | 2006-06-27 | 2006-07-13 |  | 0d |  |  |  | 96h |
| 55 | 1.10.2.1 | Test Plan Execution |  | 6d? | 2006-06-27 | 2006-07-05 | 53 | 0d |  | finish no earlier than 2005-05-19 | Application Assembler 1 | 48h |
| 56 | 1.10.2.2 | Application Bug Fixes Implemented |  | 6d? | 2006-07-05 | 2006-07-13 | 55 | 0d |  | finish no earlier than 2005-05-19 | Application Assembler 1 | 48h |
| 57 | 1.10.3 | Project Manager Certification | milestone | 1d? | 2006-07-13 | 2006-07-14 | 56 | 0d |  | start no earlier than 2005-05-20 | Project Manager | 8h |
| 58 | 1.11 | **Deployment** |  | 15d? | 2006-07-14 | 2006-08-04 |  | 0d |  |  |  | 200h |
| 59 | 1.11.1 | Deployment to Customer QA |  | 5d? | 2006-07-14 | 2006-07-21 | 57 | 0d |  | finish no earlier than 2005-05-27 | Project Manager; Application Assembler 1 | 80h |
| 60 | 1.11.2 | **Testing Iteration** |  | 10d? | 2006-07-21 | 2006-08-04 |  | 0d |  |  |  | 120h |
| 61 | 1.11.2.1 | Test Plan Execution |  | 5d? | 2006-07-21 | 2006-07-28 | 59 | 0d |  | finish no earlier than 2005-06-03 | Project Manager; Application Assembler 1 | 80h |
| 62 | 1.11.2.2 | User Acceptance Testing | milestone | 5d? | 2006-07-28 | 2006-08-04 | 61 | 0d |  | finish no earlier than 2005-06-03 | Customer | 40h |
| 63 | 1.12 | **Wrap Up** |  | 5d? | 2004-01-27 | 2004-02-02 |  | 653.5d |  |  |  | 40h |
| 64 | 1.12.1 | Binder |  | 1d? | 2004-01-27 | 2004-01-27 |  | 653.5d | 0d |  | Project Manager | 8h |
| 65 | 1.12.2 | Final Presentation |  | 1d? | 2004-01-28 | 2004-01-28 | 64 | 653.5d | 0d |  | Project Manager | 8h |
| 66 | 1.12.3 | Case Study |  | 3d | 2004-01-29 | 2004-02-02 | 65 | 653.5d |  |  | Project Manager | 24h |
| 67 | 1.13 | **Support** |  | 1d? | 2004-01-27 | 2004-01-27 |  | 657.5d |  |  |  | 16h |
| 68 | 1.13.1 | Capture DRs |  | 1d? | 2004-01-27 | 2004-01-27 |  | 657.5d |  |  | Project Manager | 8h |
| 69 | 1.13.2 | Release Fix |  | 1d? | 2004-01-27 | 2004-01-27 |  | 657.5d |  |  | Project Manager | 8h |
